# Agile project management(16-June to 15-July-18)

Schedule from MS Project, 2018-06-16 to 2018-07-18, A marks actual dates.

## Calendars

- Standard: Mon-Fri 08:00-12:00, 13:00-17:00; Sat-Sun off.

## Resources

| Resource |
| --- |
| Bob |
| Amit Rajput |
| Dipak Soni |
| Sumit |
| Customer |
| Trishla |

## Schedule

| ID | Task | Type | Duration | Start | Finish | Predecessors | Complete | Baseline start | Baseline finish | Baseline duration | Constraint | Resources | Work | Actual work |
| --- | --- | --- | --- | --- | --- | --- | --- | --- | --- | --- | --- | --- | --- | --- |
| 1 | FMDSS Crack | manual | 22d | 2018-06-16 A | 2018-07-15 A |  | 100% | 2018-06-16 | 2018-07-15 | 22d | start no earlier than 2018-06-16 |  |  |  |
| 2 | Added the functionality to add multiple member inside grid along with DB work in JFMC module. |  | 2d? | 2018-06-16 A | 2018-06-20 A |  | 100% | 2018-06-16 | 2018-06-20 | 2d? | finish no earlier than 2018-06-20 | Amit Rajput | 16h | 16h |
| 3 | Mapped new Assigner Users for amrita devi module |  | 3d | 2018-06-21 A | 2018-06-25 A | 2 | 100% | 2018-06-21 | 2018-06-25 | 3d | finish no earlier than 2018-06-25 | Amit Rajput | 24h | 24h |
| 4 | Worked on Fixed Amrita devi module bugs |  | 4d | 2018-06-27 A | 2018-07-02 A | 3 | 100% | 2018-06-26 | 2018-06-29 | 4d |  | Amit Rajput | 32h | 32h |
| 5 | Updated Changes in Nursery Module |  | 4d? | 2018-07-02 A | 2018-07-05 A | 4 | 100% | 2018-07-02 | 2018-07-05 | 4d? |  | Amit Rajput | 32h | 32h |
| 6 | New Reports are created In Nursery Module |  | 2d | 2018-07-06 A | 2018-07-09 A | 5 | 100% | 2018-07-06 | 2018-07-09 | 0d | finish no earlier than 2018-07-09 | Amit Rajput | 16h | 16h |
| 7 | Updated Education and Research Permit |  | 2d | 2018-07-12 A | 2018-07-13 A | 6 | 100% | 2018-07-10 | 2018-07-13 | 0d | finish no earlier than 2018-07-13 | Amit Rajput | 16h | 16h |
| 8 | Created User registration form in FRA module |  | 2d? | 2018-07-12 A | 2018-07-13 A |  | 100% | 2018-07-12 | 2018-07-14 | 0d | finish no earlier than 2018-07-14 | Dipak Soni | 16h | 16h |
| 9 | Release for Testing | milestone | 0d | 2018-07-16 A | 2018-07-16 A | 8 | 100% | 2018-07-16 | 2018-07-16 | 0d | start no earlier than 2018-07-16 | Trishla |  |  |
| 10 | Testing |  | 1d? | 2018-07-16 A | 2018-07-16 A | 9 | 100% | 2018-07-17 | 2018-07-17 | 0d |  |  |  |  |
| 11 | Customer UAT |  | 1d? | 2018-07-17 A | 2018-07-17 A | 10 | 100% | 2018-07-18 | 2018-07-18 | 0d |  | Customer | 8h | 8h |
| 12 | Deployed at production |  | 1d? | 2018-07-18 A | 2018-07-18 A | 11 | 100% | 2018-07-19 | 2018-07-19 | 0d |  |  |  |  |
