# Agile Project Management

Schedule from MS Project, 2012-10-18 to 2018-08-20, A marks actual dates.

## Calendars

- Standard: Mon-Fri 08:00-12:00, 13:00-17:00; Sat-Sun off. Exceptions (off unless hours are given): 2012-10-20 08:00-12:00, 13:00-17:00.

## Resources

| Resource |
| --- |
| Bob |
| Amit Rajput |
| Dipak Soni |
| Sumit vj |
| Customer |

## Schedule

| ID | Task | Type | Duration | Start | Finish | Predecessors | Complete | Remaining | Baseline start | Baseline finish | Baseline duration | Total slack | Constraint | Resources | Work | Actual work |
| --- | --- | --- | --- | --- | --- | --- | --- | --- | --- | --- | --- | --- | --- | --- | --- | --- |
| 1 | FMDSS Crack |  | 24d? | 2018-07-16 A | 2018-08-16 |  | 21% | 19d? | 2018-07-16 | 2018-08-16 | 0d | 2d | finish no earlier than 2018-08-15 |  |  |  |
| 2 | Nursery Module |  | 3d? | 2018-07-16 A | 2018-07-18 A |  | 100% |  | 2018-07-16 | 2018-07-18 | 0d |  | finish no earlier than 2018-07-18 | Amit Rajput | 24h | 24h |
| 3 | Update new changes of DOD Module |  | 4d? | 2018-07-17 A | 2018-07-20 A |  | 100% |  | 2018-07-16 | 2018-07-20 | 0d |  | start no earlier than 2018-07-17 | Dipak Soni | 32h | 32h |
| 4 | updated Education and wildlife |  | 3d? | 2018-07-19 A | 2018-07-23 A | 2 | 100% |  | 2018-07-19 | 2018-07-23 | 0d |  | finish no earlier than 2018-07-23 | Amit Rajput | 24h | 24h |
| 5 | Created Report as per client requirement |  | 1d? | 2018-07-24 A | 2018-07-24 A | 3 | 100% |  | 2018-07-20 | 2018-07-23 | 0d |  | finish no earlier than 2018-07-24 | Dipak Soni | 8h | 8h |
| 6 | Convert HTML Code into Pdf |  | 2d? | 2018-07-24 A | 2018-07-25 A | 4 | 100% |  | 2018-07-23 | 2018-07-24 | 0d |  | finish no earlier than 2018-07-24 | Amit Rajput | 16h | 16h |
| 7 | Update Animal Rescue |  | 1d? | 2018-07-27 A | 2018-07-27 A | 5 | 100% |  | 2018-07-25 | 2018-07-27 | 0d |  | finish no earlier than 2018-07-27 | Dipak Soni | 8h | 8h |
| 8 | Education and research |  | 3d? | 2018-07-26 A | 2018-07-30 A | 6 | 100% |  | 2018-07-26 | 2018-07-30 | 0d |  | finish no earlier than 2018-07-30 | Amit Rajput | 24h | 24h |
| 9 | Made the all changes in Claim request one time page as per new changes made in claim request page. |  | 4d? | 2018-07-30 A | 2018-08-02 A | 7 | 100% |  | 2018-07-30 | 2018-08-01 | 0d |  | finish no earlier than 2018-08-02 | Dipak Soni | 32h | 32h |
| 10 | Online booking |  | 3d? | 2018-07-31 A | 2018-08-02 A | 8 | 100% |  | 2018-07-31 | 2018-08-01 | 0d |  | finish no earlier than 2018-08-01 | Amit Rajput | 24h | 24h |
| 11 | Update and add New head Nursery Module |  | 3d? | 2018-08-03 A | 2018-08-07 A | 9 | 100% |  | 2018-08-03 | 2018-08-07 | 0d |  | finish no earlier than 2018-08-07 | Dipak Soni | 24h | 24h |
| 12 | Made the all changes in Claim request one time page as per new changes made in claim request page. |  | 3d? | 2018-08-03 A | 2018-08-07 A | 10 | 100% |  | 2018-08-03 | 2018-08-07 | 0d |  | finish no earlier than 2018-08-07 | Amit Rajput | 24h | 24h |
| 13 | Resolve Issue Online Ticket Booking |  | 2d? | 2018-08-09 A | 2018-08-10 A | 11 | 100% |  | 2018-08-09 | 2018-08-10 | 0d |  | finish no earlier than 2018-08-10 | Dipak Soni | 16h | 16h |
| 14 | Added grid for "Specimen / sample collection Details" entry in wildlife schedule |  | 2d? | 2018-08-08 A | 2018-08-09 A | 12 | 100% |  | 2018-08-08 | 2018-08-09 |  |  | finish no earlier than 2018-08-09 | Amit Rajput | 16h | 16h |
| 15 | Made changes on all the approver pages as per new changes made on Citizen part. |  | 2d? | 2018-08-13 A | 2018-08-14 A | 13 | 100% |  | 2018-08-11 | 2018-08-14 | 0d |  | finish no earlier than 2018-08-14 | Dipak Soni | 16h | 16h |
| 16 | Converted all page with Model and it's related changes on all the pages. |  | 2d? | 2018-08-10 A | 2018-08-13 A | 14 | 100% |  | 2018-08-10 | 2018-08-13 | 0d |  | finish no earlier than 2018-08-13 | Amit Rajput | 16h | 16h |
| 17 | Map user of depot in pre-production server. |  | 3d? | 2018-08-14 A | 2018-08-16 A | 16 | 100% |  | 2018-08-14 | 2018-08-15 | 0d |  | finish no earlier than 2018-08-16 | Amit Rajput | 24h | 24h |
| 18 | Release for Testing | milestone | 0d | 2018-08-16 A | 2018-08-16 A | 17 | 100% |  | 2018-08-16 | 2018-08-16 | 0d |  |  | Sumit vj |  |  |
| 19 | Testing |  | 1d? | 2018-08-17 A | 2018-08-17 A | 18 | 100% |  | 2018-08-17 | 2018-08-17 | 0d |  |  |  |  |  |
| 20 | Customer UAT |  | 1d? | 2012-10-18 A | 2012-10-18 A | 19 | 100% |  | 2018-08-18 | 2018-08-18 | 0d |  |  | Customer | 8h | 8h |
| 21 | Deployed at production |  | 1d? | 2018-08-20 A | 2018-08-20 A | 20 | 100% |  | 2018-08-20 | 2018-08-20 |  |  |  |  |  |  |
